# planning_kt4

Schedule from MS Project, 2018-03-26 to 2018-05-17, 6 hours a day.

## Calendars

- Standard: Mon-Wed 09:00-16:00; Thu 09:00-12:15; Fri 09:00-16:00; Sat-Sun off. Exceptions (off unless hours are given): 2018-03-30 (Goede vrijdag), 2018-04-02 to 2018-04-06 (Toetsweek), 2018-04-27 (Koningsdag), 2018-04-30 to 2018-05-04 (Meivakantie).

## Resources

| Resource |
| --- |
| Tim |
| Kevin |

## Schedule

| ID | WBS | Task | Duration | Start | Finish | Predecessors | Total slack | Free slack | Constraint | Deadline | Resources | Work |
| --- | --- | --- | --- | --- | --- | --- | --- | --- | --- | --- | --- | --- |
| 1 | 1 | **Volledige applicatie** | 27.5d? | 2018-03-26 09:00 | 2018-05-17 10:45 |  | 2.08d |  |  | 2018-06-01 17:00 |  | 288.5h |
| 2 | 1.1 | **Kerntaak 1** | 7.17d? | 2018-03-26 09:00 | 2018-04-11 13:45 |  | 2.08d | 0d |  | 2018-04-13 17:00 |  | 59h |
| 3 | 1.1.1 | **KT1 Werkproces 1.1** | 2.17d | 2018-03-26 09:00 | 2018-03-27 15:00 |  | 2.08d | 0d |  |  |  | 18h |
| 4 | 1.1.1.1 | Interview/verslag | 4h | 2018-03-26 09:00 | 2018-03-26 13:00 |  | 2.08d | 0d | start no earlier than 2018-03-26 08:00 |  | Kevin; Tim | 8h |
| 5 | 1.1.1.2 | Hernieuwde opdracht | 4h | 2018-03-26 13:00 | 2018-03-27 10:00 | 4 | 2.08d | 0d |  |  | Kevin | 4h |
| 6 | 1.1.1.3 | Offerte | 5h | 2018-03-27 10:00 | 2018-03-27 15:00 | 5 | 2.08d | 1.33d |  |  | Kevin | 5h |
| 7 | 1.1.1.4 | Wireframes | 1h | 2018-03-26 13:00 | 2018-03-26 14:00 | 4 | 3.42d | 1.33d |  |  | Tim | 1h |
| 8 | 1.1.2 | **KT1 Werkproces 1.2** | 1.33d | 2018-03-27 15:00 | 2018-03-28 16:00 | 3 | 2.08d | 0d |  |  |  | 8h |
| 9 | 1.1.2.1 | Planning | 3h | 2018-03-27 15:00 | 2018-03-28 11:00 | 7 | 2.08d | 0d |  |  | Tim | 3h |
| 10 | 1.1.2.2 | Plan van aanpak | 5h | 2018-03-28 11:00 | 2018-03-28 16:00 | 9 | 2.08d | 0d |  |  | Tim | 5h |
| 11 | 1.1.3 | **KT1 Werkproces 1.3** | 0.5d | 2018-03-29 09:00 | 2018-03-29 12:00 | 8 | 2.08d | 0d |  |  |  | 6h |
| 12 | 1.1.3.1 | Ontwerpdocument/functioneel ontwerp | 1h | 2018-03-29 09:00 | 2018-03-29 10:00 | 10 | 2.08d | 0d |  |  | Tim | 1h |
| 13 | 1.1.3.2 | Use Case diagram en Use Case Templates | 3h | 2018-03-29 09:00 | 2018-03-29 12:00 | 6 | 2.08d | 0d |  |  | Kevin | 3h |
| 14 | 1.1.3.3 | Prototype toelichting volgordelijkheid | 2h | 2018-03-29 10:00 | 2018-03-29 12:00 | 12 | 2.08d | 0d |  |  | Tim | 2h |
| 15 | 1.1.4 | **KT1 Werkproces 1.4** | 1d | 2018-03-29 12:00 | 2018-04-09 14:45 | 11 | 2.08d | 0d |  |  |  | 11h |
| 16 | 1.1.4.1 | Ontwerpdocument – Technisch ontwerp | 1h | 2018-03-29 12:00 | 2018-04-09 09:45 | 13 | 2.08d | 0d |  |  | Kevin | 1h |
| 17 | 1.1.4.2 | Modeldictionary | 2h | 2018-03-29 12:00 | 2018-04-09 10:45 | 14 | 2.25d | 0d |  |  | Tim | 2h |
| 18 | 1.1.4.3 | Klassendiagram | 3h | 2018-04-09 11:45 | 2018-04-09 14:45 | 19 | 2.08d | 0d |  |  | Kevin | 3h |
| 19 | 1.1.4.4 | Datadictionary | 2h | 2018-04-09 09:45 | 2018-04-09 11:45 | 16 | 2.08d | 0d |  |  | Kevin | 2h |
| 20 | 1.1.4.5 | Sequentiediagrammen | 3h | 2018-04-09 10:45 | 2018-04-09 13:45 | 17 | 2.25d | 0.17d |  |  | Tim | 3h |
| 21 | 1.1.5 | **KT1 Werkproces 1.5** | 2.17d? | 2018-04-09 14:45 | 2018-04-11 13:45 | 15 | 2.08d |  |  |  |  | 16h |
| 22 | 1.1.5.1 | Materialenlijst: Hard- en software van de ontwikkelomgeving | 2h | 2018-04-09 14:45 | 2018-04-10 09:45 | 18, 20 | 2.08d | 0d |  |  | Tim; Kevin | 4h |
| 23 | 1.1.5.2 | Back-up procedure | 2h | 2018-04-10 09:45 | 2018-04-10 11:45 | 22 | 2.08d | 0d |  |  | Kevin | 2h |
| 24 | 1.1.5.3 | Verslag over de installatie, configuratie en testen van de testomgeving | 3h | 2018-04-10 11:45 | 2018-04-10 14:45 | 23, 22 | 2.08d | 0d |  |  | Kevin; Tim | 6h |

| ID | WBS | Task | Duration | Start | Finish | Predecessors | Total slack | Free slack | Deadline | Resources | Work |
| --- | --- | --- | --- | --- | --- | --- | --- | --- | --- | --- | --- |
| 25 | 1.1.5.4 | **Taakverdeling Ontwikkelomgeving** | 1d? | 2018-04-10 14:45 | 2018-04-11 13:45 | 24 | 2.08d |  |  |  | 4h |
| 26 | 1.1.5.4.1 | aanmaken github | 1h | 2018-04-10 14:45 | 2018-04-10 15:45 | 24 | 2.75d | 0d |  | Kevin | 1h |
| 27 | 1.1.5.4.2 | mappen structuur aanmaken voor de documenten | 1h | 2018-04-10 15:45 | 2018-04-11 09:45 | 26 | 2.75d | 0.67d |  | Kevin | 1h |
| 28 | 1.1.5.4.3 | Laravel implementeren | 6h? | 2018-04-10 14:45 | 2018-04-11 13:45 |  | 2.08d |  |  |  |  |
| 29 | 1.1.5.4.4 | vue.js in het project zetten en in github | 1h | 2018-04-10 14:45 | 2018-04-10 15:45 | 24 | 2.75d | 0d |  | Tim | 1h |
| 30 | 1.1.5.4.5 | development branche aanmaken in github | 1h | 2018-04-10 15:45 | 2018-04-11 09:45 | 29 | 2.75d | 0.67d |  | Tim | 1h |
| 31 | 1.2 | **Kerntaak 2** | 16d | 2018-04-11 13:45 | 2018-05-11 12:45 | 2 | 9.79d |  | 2018-05-25 17:00 |  | 170.5h |
| 32 | 1.2.1 | **KT2 Werkproces 2.1** | 0.67d | 2018-04-11 13:45 | 2018-04-12 10:45 |  | 9.79d | 0d |  |  | 8h |
| 33 | 1.2.1.1 | Documentatie van het inlezen van gegevens | 2h | 2018-04-11 13:45 | 2018-04-11 15:45 | 30 | 9.79d | 0d |  | Tim | 2h |
| 34 | 1.2.1.2 | Toelichting op het inrichten van de database | 4h | 2018-04-11 13:45 | 2018-04-12 10:45 | 27 | 9.79d | 0d |  | Kevin | 4h |
| 35 | 1.2.1.3 | De ingerichte database | 2h | 2018-04-11 15:45 | 2018-04-12 10:45 | 33 | 9.79d | 0d |  | Tim | 2h |
| 36 | 1.2.2 | **KT2 Werkproces 2.3** | 9d | 2018-04-12 10:45 | 2018-04-25 09:15 | 32 | 9.79d | 0d |  |  | 88h |
| 37 | 1.2.2.1 | Taakverdeling voor het realiseren van een applicatie | 2h | 2018-04-12 10:45 | 2018-04-13 09:30 | 35 | 12.46d | 0d |  | Tim | 2h |
| 38 | 1.2.2.2 | Mondelinge toelichting op de gebruikte materialen- en middelenlijst | 3h | 2018-04-12 10:45 | 2018-04-13 10:30 | 34 | 9.79d | 0d |  | Kevin | 3h |
| 39 | 1.2.2.3 | herkansing documenten aanpassen | 22h | 2018-04-13 10:30 | 2018-04-18 11:30 | 38 | 9.79d | 0d |  | Kevin | 22h |
| 40 | 1.2.2.4 | herkansing documenten aanpassen | 4h | 2018-04-13 09:30 | 2018-04-13 13:30 | 37 | 12.46d | 0d |  | Tim | 4h |
| 41 | 1.2.2.5 | **Werkende live webapp/ gespreksverslag hiervan met mogelijke veranderingen** | 8d | 2018-04-13 13:30 | 2018-04-25 09:15 |  | 9.79d |  |  |  | 57h |
| 42 | 1.2.2.5.1 | **Enquete** | 3.67d | 2018-04-13 13:30 | 2018-04-18 14:30 |  | 9.79d |  |  |  | 9h |
| 43 | 1.2.2.5.1.1 | **Front-end** | 0.5d | 2018-04-18 11:30 | 2018-04-18 14:30 |  | 9.79d |  |  |  | 3h |
| 44 | 1.2.2.5.1.1.1 | Homepagina | 1h | 2018-04-18 11:30 | 2018-04-18 12:30 | 39 | 9.79d | 0d |  | Kevin | 1h |
| 45 | 1.2.2.5.1.1.2 | Bericht achterlaten | 2h | 2018-04-18 12:30 | 2018-04-18 14:30 | 44 | 9.79d | 0d |  | Kevin | 2h |
| 46 | 1.2.2.5.1.2 | **Back-end** | 1d | 2018-04-13 13:30 | 2018-04-16 12:30 |  | 12.46d | 0d |  |  | 6h |
| 47 | 1.2.2.5.1.2.1 | Meningen opslaan in database | 4h | 2018-04-13 13:30 | 2018-04-16 10:30 | 40 | 12.46d | 0d |  | Tim | 4h |
| 48 | 1.2.2.5.1.2.2 | Contactgegevens kunnen achtergelaten worden | 2h | 2018-04-16 10:30 | 2018-04-16 12:30 | 47 | 12.46d | 0d |  | Tim | 2h |

| ID | WBS | Task | Duration | Start | Finish | Predecessors | Total slack | Free slack | Resources | Work |
| --- | --- | --- | --- | --- | --- | --- | --- | --- | --- | --- |
| 49 | 1.2.2.5.2 | **Dashboard** | 7d | 2018-04-16 12:30 | 2018-04-25 09:15 |  | 9.79d |  |  | 48h |
| 50 | 1.2.2.5.2.1 | **Front-end** | 3.33d | 2018-04-16 12:30 | 2018-04-19 11:30 | 46 | 9.96d |  |  | 5h |
| 51 | 1.2.2.5.2.1.1 | Dashboard menu | 1h | 2018-04-18 14:30 | 2018-04-18 15:30 | 45 | 9.79d | 0d | Kevin | 1h |
| 52 | 1.2.2.5.2.1.2 | Login pagina | 1h | 2018-04-18 15:30 | 2018-04-19 09:30 | 51 | 9.79d | 0d | Kevin | 1h |
| 53 | 1.2.2.5.2.1.3 | mail overzicht | 2h | 2018-04-19 09:30 | 2018-04-19 11:30 | 52 | 9.79d | 0d | Kevin | 2h |
| 54 | 1.2.2.5.2.1.4 | Pagina gegevensoverzicht | 1h | 2018-04-16 12:30 | 2018-04-16 13:30 | 48 | 13.12d | 0d | Tim | 1h |
| 55 | 1.2.2.5.2.2 | **Back-end** | 6.83d | 2018-04-16 13:30 | 2018-04-25 09:15 |  | 9.79d |  |  | 43h |
| 56 | 1.2.2.5.2.2.1 | Data is overzichtelijk te zien over meerdere periodes | 10h | 2018-04-16 13:30 | 2018-04-18 09:30 | 54 | 13.12d | 0d | Tim | 10h |
| 57 | 1.2.2.5.2.2.2 | mail overzicht maken en mails verwijderen | 8h | 2018-04-19 11:30 | 2018-04-23 09:15 | 53 | 9.79d | 0d | Kevin | 8h |
| 58 | 1.2.2.5.2.2.3 | Mogelijk in te loggen | 1h | 2018-04-18 09:30 | 2018-04-18 10:30 | 56 | 13.12d | 0d | Tim | 1h |
| 59 | 1.2.2.5.2.2.4 | automatics mail versturen | 10h | 2018-04-18 10:30 | 2018-04-20 10:15 | 58 | 13.12d | 3.33d | Tim | 10h |
| 60 | 1.2.2.5.2.2.5 | excel export | 14h | 2018-04-23 09:15 | 2018-04-25 09:15 | 57 | 9.79d | 0d | Kevin | 14h |
| 61 | 1.2.3 | **KT2 Werkproces 2.5** | 4.5d | 2018-04-25 09:15 | 2018-05-09 12:00 | 36 | 9.79d |  |  | 54h |
| 62 | 1.2.3.1 | Functionele, technische en acceptatie test opstellen | 4h | 2018-04-25 09:15 | 2018-04-25 13:15 | 60, 59 | 9.79d | 0d | Tim; Kevin | 8h |
| 63 | 1.2.3.2 | Functionele, technische en acceptatie test uitvoeren met conclusie | 2h | 2018-04-25 13:15 | 2018-04-25 15:15 | 62 | 9.79d | 0d | Tim; Kevin | 4h |
| 64 | 1.2.3.3 | Aanpassingen doorgeven | 20h | 2018-04-25 15:15 | 2018-05-09 11:00 | 63 | 9.79d | 0d | Tim; Kevin | 40h |
| 65 | 1.2.3.4 | Toelichting van de aanpassingen | 1h | 2018-05-09 11:00 | 2018-05-09 12:00 | 64 | 9.79d | 0d | Tim; Kevin | 2h |
| 66 | 1.2.4 | **KT2 Werkproces 2.6** | 0.83d | 2018-05-09 12:00 | 2018-05-10 10:00 |  | 9.79d |  |  | 8.5h |
| 67 | 1.2.4.1 | Voorstel tot optimalisatie | 1h | 2018-05-09 12:00 | 2018-05-09 13:00 | 65 | 9.79d | 0d | Tim; Kevin | 2h |
| 68 | 1.2.4.2 | **Planning voor optimalisatie** | 0.5d | 2018-05-09 13:00 | 2018-05-09 16:00 |  | 9.79d |  |  | 4.5h |
| 69 | 1.2.4.2.1 | kleine aanpassingen | 1h | 2018-05-09 13:00 | 2018-05-09 14:00 | 67 | 9.79d | 0d | Kevin; Tim | 2h |
| 70 | 1.2.4.2.2 | nieuw invoer balk voor telefoon nummer in pop-up | 2h | 2018-05-09 14:00 | 2018-05-09 16:00 | 69 | 9.79d | 0d | Kevin | 2h |
| 71 | 1.2.4.2.3 | smile zelfde grootte | 30min | 2018-05-09 14:00 | 2018-05-09 14:30 | 69 | 10.04d | 0.25d | Tim | 0.5h |
| 72 | 1.2.4.3 | Documentatie bijwerken na optimalisatie | 1h | 2018-05-10 09:00 | 2018-05-10 10:00 | 70, 71 | 9.79d | 0d | Tim; Kevin | 2h |

| ID | WBS | Task | Duration | Start | Finish | Predecessors | Total slack | Free slack | Deadline | Resources | Work |
| --- | --- | --- | --- | --- | --- | --- | --- | --- | --- | --- | --- |
| 73 | 1.2.5 | **KT2 Werkproces 2.7** | 1d | 2018-05-10 10:00 | 2018-05-11 12:45 |  | 9.79d |  |  |  | 12h |
| 74 | 1.2.5.1 | Agenda - notulen | 4h | 2018-05-10 10:00 | 2018-05-11 10:45 | 72 | 9.79d | 0d |  | Tim; Kevin | 8h |
| 75 | 1.2.5.2 | Voorzitter: project planning; Notulist: Projectmap | 1h | 2018-05-11 10:45 | 2018-05-11 11:45 | 74 | 9.79d | 0d |  | Tim; Kevin | 2h |
| 76 | 1.2.5.3 | Evaluatieformulier | 1h | 2018-05-11 11:45 | 2018-05-11 12:45 | 75 | 9.79d | 0d |  | Tim; Kevin | 2h |
| 77 | 1.3 | **Kerntaak 3** | 4.33d | 2018-05-11 12:45 | 2018-05-17 10:45 |  | 10.67d |  | 2018-06-01 17:00 |  | 52h |
| 78 | 1.3.1 | **KT3 Werkproces 3.1** | 1.67d | 2018-05-11 12:45 | 2018-05-14 15:45 |  | 10.67d |  |  |  | 20h |
| 79 | 1.3.1.1 | Maak een implementatieplan (technische en organisatorisch) en bespreek dit met de | 10h | 2018-05-11 12:45 | 2018-05-14 15:45 | 76 | 10.67d | 0d |  | Tim; Kevin | 20h |
| 80 | 1.3.2 | **KT3 Werkproces 3.3** | 1.67d | 2018-05-14 15:45 | 2018-05-16 11:45 |  | 10.67d |  |  |  | 20h |
| 81 | 1.3.2.1 | Documentatie van het implementeren van de applicatie in de productieomgeving | 10h | 2018-05-14 15:45 | 2018-05-16 11:45 | 79 | 10.67d | 0d |  | Tim; Kevin | 20h |
| 82 | 1.3.3 | **KT3 Werkproces 3.4** | 1d | 2018-05-16 11:45 | 2018-05-17 10:45 |  | 10.67d |  |  |  | 12h |
| 83 | 1.3.3.1 | Verzamel, bespreek en leg de gegevens van het implementatietraject in een | 6h | 2018-05-16 11:45 | 2018-05-17 10:45 | 81 | 10.67d |  |  | Tim; Kevin | 12h |
| 84 | 1.4 | **Kerntaak 4** | 1.17d | 2018-03-26 09:00 | 2018-03-26 16:00 |  | 37d |  |  | Tim | 7h |
| 85 | 1.4.1 | **KT4 Werkproces 4.3** | 0.33d | 2018-03-26 09:00 | 2018-03-26 11:00 |  | 37.83d |  |  |  |  |
| 86 | 1.4.1.1 | Onderzoek samenhang | 2h | 2018-03-26 09:00 | 2018-03-26 11:00 |  | 37.83d |  |  |  |  |
| 87 | 1.4.1.2 | Notulen van overleg | 1h | 2018-03-26 09:00 | 2018-03-26 10:00 |  | 38d |  |  |  |  |
| 88 | 1.4.1.3 | Wijzigingen doorvoeren en testen | 1h | 2018-03-26 09:00 | 2018-03-26 10:00 |  | 38d |  |  |  |  |
| 89 | 1.4.2 | **KT4 Werkproces 4.4** | 1.17d | 2018-03-26 09:00 | 2018-03-26 16:00 |  | 37d |  |  |  |  |
| 90 | 1.4.2.1 | Wijzigingsvoorstel | 1h | 2018-03-26 09:00 | 2018-03-26 10:00 |  | 38d |  |  |  |  |
| 91 | 1.4.2.2 | Technisch ontwerp | 2h | 2018-03-26 09:00 | 2018-03-26 11:00 |  | 37.83d |  |  |  |  |
| 92 | 1.4.2.3 | Script uitvoeren | 7h | 2018-03-26 09:00 | 2018-03-26 16:00 |  | 37d |  |  |  |  |
| 93 | 1.4.2.4 | Resultaat rapporteren | 2h | 2018-03-26 09:00 | 2018-03-26 11:00 |  | 37.83d |  |  |  |  |
| 94 | 1.4.3 | **KT4 Werkproces 4.5** | 0.33d | 2018-03-26 09:00 | 2018-03-26 11:00 |  | 37.83d |  |  |  |  |
| 95 | 1.4.3.1 | Overdrachtsdocument | 2h | 2018-03-26 09:00 | 2018-03-26 11:00 |  | 37.83d |  |  |  |  |
| 96 | 1.4.3.2 | Pakket van eisen | 1h | 2018-03-26 09:00 | 2018-03-26 10:00 |  | 38d |  |  |  |  |
| 97 | 1.4.3.3 | Testverslag | 2h | 2018-03-26 09:00 | 2018-03-26 11:00 |  | 37.83d |  |  |  |  |
| 98 | 1.4.3.4 | Archiveerplan | 2h | 2018-03-26 09:00 | 2018-03-26 11:00 |  | 37.83d |  |  |  |  |
| 99 | 1.4.3.5 | Gebruikershandleiding | 2h | 2018-03-26 09:00 | 2018-03-26 11:00 |  | 37.83d |  |  |  |  |
